Schedule from MS Project, 2021-08-16 to 2022-03-31, costs in $, A marks actual dates.

## Calendars

- Standard: Mon-Fri 08:00-12:00, 13:00-17:00; Sat-Sun off.

## Resources

| Resource | Rate |
| --- | --- |
| Tae | 100 |
| Mark | 100 |
| Ice | 100 |
| Advisor |  |

## Schedule

| ID | WBS | Task | Type | Duration | Start | Finish | Predecessors | Complete | Actual finish | Baseline start | Baseline finish | Baseline duration | Resources | Work | Actual work | Cost | Baseline cost | Actual cost |
| --- | --- | --- | --- | --- | --- | --- | --- | --- | --- | --- | --- | --- | --- | --- | --- | --- | --- | --- |
| 1 | 1 | **Requirement** |  | 3d | 2021-08-16 09:00 A | 2021-08-19 09:00 A |  | 100% |  | 2021-08-16 09:00 | 2021-08-19 09:00 | 3d |  | 30h | 30h | 3,000 | 3,000 | 3,000 |
| 2 | 1.1 | สรุป Requirement ที่ต้องทำจาก CEPP 2563 |  | 3d | 2021-08-16 09:00 A | 2021-08-19 09:00 A |  | 100% |  | 2021-08-16 09:00 | 2021-08-19 09:00 | 3d | Tae; Mark; Ice | 30h | 30h | 3,000 | 3,000 | 3,000 |
| 3 | 1.2 | Finish Requirement Phase | milestone | 0d | 2021-08-19 09:00 A | 2021-08-19 09:00 A | 2 | 100% |  | 2021-08-19 09:00 | 2021-08-19 09:00 | 0d |  |  |  |  |  |  |
| 4 | 2 | **การออกแบบ** |  | 42d | 2021-08-19 09:00 A | 2021-10-15 18:00 | 1 | 100% | 2021-10-15 12:00 | 2021-08-19 09:00 | 2021-10-15 18:00 | 42d |  | 485h | 485h | 48,500 | 48,500 | 48,500 |
| 5 | 2.1 | **Diagram** |  | 18.38d | 2021-08-19 09:00 A | 2021-09-14 12:00 A |  | 100% |  | 2021-08-19 09:00 | 2021-09-14 12:00 | 18.38d |  | 231h | 231h | 23,100 | 23,100 | 23,100 |
| 6 | 2.1.1 | Use Case |  | 1d | 2021-08-19 09:00 A | 2021-08-20 09:00 A | 2 | 100% |  | 2021-08-19 09:00 | 2021-08-20 09:00 | 1d | Tae; Mark; Ice | 18h | 18h | 1,800 | 1,800 | 1,800 |
| 7 | 2.1.2 | Data Model |  | 7d | 2021-08-20 09:00 A | 2021-08-31 09:00 A | 6 | 100% |  | 2021-08-20 09:00 | 2021-08-31 09:00 | 7d | Tae; Mark; Ice | 75h | 75h | 7,500 | 7,500 | 7,500 |
| 8 | 2.1.3 | Sequence |  | 3d | 2021-08-31 09:00 A | 2021-09-03 09:00 A | 7 | 100% |  | 2021-08-31 09:00 | 2021-09-03 09:00 | 3d | Tae; Mark; Ice | 48h | 48h | 4,800 | 4,800 | 4,800 |
| 9 | 2.1.4 | Deployment |  | 1d | 2021-09-03 09:00 A | 2021-09-06 09:00 A | 8 | 100% |  | 2021-09-03 09:00 | 2021-09-06 09:00 | 1d | Tae; Mark; Ice | 18h | 18h | 1,800 | 1,800 | 1,800 |
| 10 | 2.1.5 | Microservice Deployment |  | 6.38d | 2021-09-06 09:00 A | 2021-09-14 12:00 A | 9 | 100% |  | 2021-09-06 09:00 | 2021-09-14 12:00 | 6.38d | Tae; Mark; Ice | 72h | 72h | 7,200 | 7,200 | 7,200 |
| 11 | 2.1.6 | Finish Diagram Phase | milestone | 0d | 2021-09-14 12:00 A | 2021-09-14 12:00 A | 10 | 100% |  | 2021-09-14 12:00 | 2021-09-14 12:00 | 0d |  |  |  |  |  |  |
| 12 | 2.2 | **API Modules Design** |  | 23d | 2021-09-14 13:00 A | 2021-10-15 12:00 A |  | 100% |  | 2021-09-14 13:00 | 2021-10-15 12:00 | 23d |  | 94h | 94h | 9,400 | 9,400 | 9,400 |
| 13 | 2.2.1 | **ผู้เล่น** |  | 13d | 2021-09-14 13:00 A | 2021-10-01 12:00 A |  | 100% |  | 2021-09-14 13:00 | 2021-10-01 12:00 | 13d |  | 54h | 54h | 5,400 | 5,400 | 5,400 |
| 14 | 2.2.1.1 | การสมัครสมาชิก |  | 1d | 2021-09-14 13:00 A | 2021-09-15 12:00 A | 10 | 100% |  | 2021-09-14 13:00 | 2021-09-15 12:00 | 1d | Mark | 4h | 4h | 400 | 400 | 400 |
| 15 | 2.2.1.2 | การเพิ่มระดับสมาชิก |  | 1d | 2021-09-15 13:00 A | 2021-09-16 12:00 A | 14 | 100% |  | 2021-09-15 13:00 | 2021-09-16 12:00 | 1d | Mark | 4h | 4h | 400 | 400 | 400 |
| 16 | 2.2.1.3 | การเข้าสู่ระบบ |  | 1d | 2021-09-16 13:00 A | 2021-09-17 12:00 A | 15 | 100% |  | 2021-09-16 13:00 | 2021-09-17 12:00 | 1d | Mark | 4h | 4h | 400 | 400 | 400 |
| 17 | 2.2.1.4 | การแก้ไขรายละเอียดสมาชิก |  | 1d | 2021-09-17 13:00 A | 2021-09-20 12:00 A | 16 | 100% |  | 2021-09-17 13:00 | 2021-09-20 12:00 | 1d | Mark | 4h | 4h | 400 | 400 | 400 |
| 18 | 2.2.1.5 | การตั้งค่ารูปแบบหน้าจอ |  | 1d | 2021-09-20 13:00 A | 2021-09-21 12:00 A | 17 | 100% |  | 2021-09-20 13:00 | 2021-09-21 12:00 | 1d | Mark | 4h | 4h | 400 | 400 | 400 |
| 19 | 2.2.1.6 | การรับข้อมูลจากบอร์ดประกาศ |  | 2d | 2021-09-21 13:00 A | 2021-09-23 12:00 A | 18 | 100% |  | 2021-09-21 13:00 | 2021-09-23 12:00 | 2d | Mark | 8h | 8h | 800 | 800 | 800 |
| 20 | 2.2.1.7 | การเติมเงินและการจ่ายเงิน |  | 2d | 2021-09-23 13:00 A | 2021-09-27 12:00 A | 19 | 100% |  | 2021-09-23 13:00 | 2021-09-27 12:00 | 2d | Mark | 10h | 10h | 1,000 | 1,000 | 1,000 |
| 21 | 2.2.1.8 | การเข้าร่วมการแข่งขัน |  | 1d | 2021-09-27 13:00 A | 2021-09-28 12:00 A | 20 | 100% |  | 2021-09-27 13:00 | 2021-09-28 12:00 | 1d | Mark | 4h | 4h | 400 | 400 | 400 |
| 22 | 2.2.1.9 | การเรียกผู้จัดการการแข่งขัน |  | 1d | 2021-09-28 13:00 A | 2021-09-29 12:00 A | 21 | 100% |  | 2021-09-28 13:00 | 2021-09-29 12:00 | 1d | Mark | 4h | 4h | 400 | 400 | 400 |
| 23 | 2.2.1.10 | การดูผลการแข่งขันในปัจจุบัน |  | 1d | 2021-09-29 13:00 A | 2021-09-30 12:00 A | 22 | 100% |  | 2021-09-29 13:00 | 2021-09-30 12:00 | 1d | Mark | 4h | 4h | 400 | 400 | 400 |
| 24 | 2.2.1.11 | การดูผลการแข่งขันย้อนหลัง |  | 1d | 2021-09-30 13:00 A | 2021-10-01 12:00 A | 23 | 100% |  | 2021-09-30 13:00 | 2021-10-01 12:00 | 1d | Mark | 4h | 4h | 400 | 400 | 400 |

| ID | WBS | Task | Duration | Start | Finish | Predecessors | Complete | Baseline start | Baseline finish | Baseline duration | Resources | Work | Actual work | Cost | Baseline cost | Actual cost |
| --- | --- | --- | --- | --- | --- | --- | --- | --- | --- | --- | --- | --- | --- | --- | --- | --- |
| 25 | 2.2.2 | **ผู้จัดการการแข่งขัน** | 6d | 2021-10-01 13:00 A | 2021-10-11 12:00 A |  | 100% | 2021-10-01 13:00 | 2021-10-11 12:00 | 6d |  | 24h | 24h | 2,400 | 2,400 | 2,400 |
| 26 | 2.2.2.1 | การเข้าสู่ระบบ | 1d | 2021-10-01 13:00 A | 2021-10-04 12:00 A | 24 | 100% | 2021-10-01 13:00 | 2021-10-04 12:00 | 1d | Mark | 4h | 4h | 400 | 400 | 400 |
| 27 | 2.2.2.2 | การดูข้อมูลการแข่งขันในปัจจุบัน | 1d | 2021-10-04 13:00 A | 2021-10-05 12:00 A | 26 | 100% | 2021-10-04 13:00 | 2021-10-05 12:00 | 1d | Mark | 4h | 4h | 400 | 400 | 400 |
| 28 | 2.2.2.3 | การสร้างรายการแข่งขัน | 1d | 2021-10-05 13:00 A | 2021-10-06 12:00 A | 27 | 100% | 2021-10-05 13:00 | 2021-10-06 12:00 | 1d | Mark | 4h | 4h | 400 | 400 | 400 |
| 29 | 2.2.2.4 | การแก้ไขรายละเอียดรายการแข่งขัน | 1d | 2021-10-06 13:00 A | 2021-10-07 12:00 A | 28 | 100% | 2021-10-06 13:00 | 2021-10-07 12:00 | 1d | Mark | 4h | 4h | 400 | 400 | 400 |
| 30 | 2.2.2.5 | การยกเลิกรายการแข่งขัน | 1d | 2021-10-07 13:00 A | 2021-10-08 12:00 A | 29 | 100% | 2021-10-07 13:00 | 2021-10-08 12:00 | 1d | Mark | 4h | 4h | 400 | 400 | 400 |
| 31 | 2.2.2.6 | การพิมพ์ผลลัพธ์การแข่ง | 1d | 2021-10-08 13:00 A | 2021-10-11 12:00 A | 30 | 100% | 2021-10-08 13:00 | 2021-10-11 12:00 | 1d | Mark | 4h | 4h | 400 | 400 | 400 |
| 32 | 2.2.3 | **ผู้ดูแลระบบ** | 4d | 2021-10-11 13:00 A | 2021-10-15 12:00 A |  | 100% | 2021-10-11 13:00 | 2021-10-15 12:00 | 4d |  | 16h | 16h | 1,600 | 1,600 | 1,600 |
| 33 | 2.2.3.1 | การเข้าสู่ระบบ | 1d | 2021-10-11 13:00 A | 2021-10-12 12:00 A | 31 | 100% | 2021-10-11 13:00 | 2021-10-12 12:00 | 1d | Mark | 4h | 4h | 400 | 400 | 400 |
| 34 | 2.2.3.2 | การลงบอร์ดประกาศ | 1d | 2021-10-12 13:00 A | 2021-10-13 12:00 A | 33 | 100% | 2021-10-12 13:00 | 2021-10-13 12:00 | 1d | Mark | 4h | 4h | 400 | 400 | 400 |
| 35 | 2.2.3.3 | การจัดการสมาชิก | 1d | 2021-10-13 13:00 A | 2021-10-14 12:00 A | 34 | 100% | 2021-10-13 13:00 | 2021-10-14 12:00 | 1d | Mark | 4h | 4h | 400 | 400 | 400 |
| 36 | 2.2.3.4 | การจัดการเรื่องเงิน | 0.5d | 2021-10-14 13:00 A | 2021-10-14 17:00 A | 35 | 100% | 2021-10-14 13:00 | 2021-10-14 17:00 | 0.5d | Mark | 2h | 2h | 200 | 200 | 200 |
| 37 | 2.2.3.5 | การสำรองข้อมูล | 0.5d | 2021-10-15 08:00 A | 2021-10-15 12:00 A | 36 | 100% | 2021-10-15 08:00 | 2021-10-15 12:00 | 0.5d | Mark | 2h | 2h | 200 | 200 | 200 |
| 38 | 2.3 | **ออกแบบหน้า UI** | 20d | 2021-09-14 13:00 A | 2021-10-12 12:00 A |  | 100% | 2021-09-14 13:00 | 2021-10-12 12:00 | 20d |  | 160h | 160h | 16,000 | 16,000 | 16,000 |
| 39 | 2.3.1 | **ผู้เล่น** | 10d | 2021-09-14 13:00 A | 2021-09-28 12:00 A |  | 100% | 2021-09-14 13:00 | 2021-09-28 12:00 | 10d |  | 66h | 66h | 6,600 | 6,600 | 6,600 |
| 40 | 2.3.1.1 | หน้าเข้าสู่ระบบ | 0.5d | 2021-09-14 13:00 A | 2021-09-14 17:00 A | 10 | 100% | 2021-09-14 13:00 | 2021-09-14 17:00 | 0.5d | Tae; Ice | 2h | 2h | 200 | 200 | 200 |
| 41 | 2.3.1.2 | หน้าสมัครสมาชิก | 0.5d | 2021-09-15 08:00 A | 2021-09-15 12:00 A | 40 | 100% | 2021-09-15 08:00 | 2021-09-15 12:00 | 0.5d | Tae; Ice | 4h | 4h | 400 | 400 | 400 |
| 42 | 2.3.1.3 | หน้ารายละเอียดสมาชิก | 1d | 2021-09-15 13:00 A | 2021-09-16 12:00 A | 41 | 100% | 2021-09-15 13:00 | 2021-09-16 12:00 | 1d | Tae; Ice | 8h | 8h | 800 | 800 | 800 |
| 43 | 2.3.1.4 | หน้าการตั้งค่ารูปแบบหน้าจอ | 1d | 2021-09-16 13:00 A | 2021-09-17 12:00 A | 42 | 100% | 2021-09-16 13:00 | 2021-09-17 12:00 | 1d | Tae; Ice | 8h | 8h | 800 | 800 | 800 |
| 44 | 2.3.1.5 | หน้าการเติมเงิน | 1d | 2021-09-17 13:00 A | 2021-09-20 12:00 A | 43 | 100% | 2021-09-17 13:00 | 2021-09-20 12:00 | 1d | Tae; Ice | 8h | 8h | 800 | 800 | 800 |
| 45 | 2.3.1.6 | หน้า Home | 1d | 2021-09-20 13:00 A | 2021-09-21 12:00 A | 44 | 100% | 2021-09-20 13:00 | 2021-09-21 12:00 | 1d | Tae; Ice | 8h | 8h | 800 | 800 | 800 |
| 46 | 2.3.1.7 | หน้าการแข่งขัน | 1d | 2021-09-21 13:00 A | 2021-09-22 12:00 A | 45 | 100% | 2021-09-21 13:00 | 2021-09-22 12:00 | 1d | Tae; Ice | 8h | 8h | 800 | 800 | 800 |
| 47 | 2.3.1.8 | หน้าเรียกกรรมการ | 1d | 2021-09-22 13:00 A | 2021-09-23 12:00 A | 46 | 100% | 2021-09-22 13:00 | 2021-09-23 12:00 | 1d | Tae; Ice | 8h | 8h | 800 | 800 | 800 |
| 48 | 2.3.1.9 | หน้าการแสดงคะแนน | 1d | 2021-09-23 13:00 A | 2021-09-24 12:00 A | 47 | 100% | 2021-09-23 13:00 | 2021-09-24 12:00 | 1d | Tae; Ice | 4h | 4h | 400 | 400 | 400 |
| 49 | 2.3.1.10 | หน้าผลการแข่งขันปัจจุบัน | 1d | 2021-09-24 13:00 A | 2021-09-27 12:00 A | 48 | 100% | 2021-09-24 13:00 | 2021-09-27 12:00 | 1d | Tae; Ice | 4h | 4h | 400 | 400 | 400 |
| 50 | 2.3.1.11 | หน้าผลการแข่งขันย้อนหลัง | 1d | 2021-09-27 13:00 A | 2021-09-28 12:00 A | 49 | 100% | 2021-09-27 13:00 | 2021-09-28 12:00 | 1d | Tae; Ice | 4h | 4h | 400 | 400 | 400 |

| ID | WBS | Task | Type | Duration | Start | Finish | Predecessors | Complete | Remaining | Baseline start | Baseline finish | Baseline duration | Total slack | Resources | Work | Actual work | Cost | Baseline cost | Actual cost |
| --- | --- | --- | --- | --- | --- | --- | --- | --- | --- | --- | --- | --- | --- | --- | --- | --- | --- | --- | --- |
| 51 | 2.3.2 | **ผู้จัดการการแข่งขัน** |  | 4.5d | 2021-09-28 13:00 A | 2021-10-04 17:00 A |  | 100% |  | 2021-09-28 13:00 | 2021-10-04 17:00 | 4.5d |  |  | 34h | 34h | 3,400 | 3,400 | 3,400 |
| 52 | 2.3.2.1 | หน้าเข้าสู่ระบบ |  | 0.5d | 2021-09-28 13:00 A | 2021-09-28 17:00 A | 50 | 100% |  | 2021-09-28 13:00 | 2021-09-28 17:00 | 0.5d |  | Tae; Ice | 2h | 2h | 200 | 200 | 200 |
| 53 | 2.3.2.2 | หน้าดูข้อมูลการแข่งขันในปัจจุบัน |  | 0.5d | 2021-09-29 08:00 A | 2021-09-29 12:00 A | 52 | 100% |  | 2021-09-29 08:00 | 2021-09-29 12:00 | 0.5d |  | Tae; Ice | 4h | 4h | 400 | 400 | 400 |
| 54 | 2.3.2.3 | หน้าสร้างรายการแข่งขัน |  | 1d | 2021-09-29 13:00 A | 2021-09-30 12:00 A | 53 | 100% |  | 2021-09-29 13:00 | 2021-09-30 12:00 | 1d |  | Tae; Ice | 8h | 8h | 800 | 800 | 800 |
| 55 | 2.3.2.4 | หน้าแก้ไขรายละเอียดรายการแข่งขัน |  | 0.5d | 2021-09-30 13:00 A | 2021-09-30 17:00 A | 54 | 100% |  | 2021-09-30 13:00 | 2021-09-30 17:00 | 0.5d |  | Tae; Ice | 4h | 4h | 400 | 400 | 400 |
| 56 | 2.3.2.5 | หน้ายกเลิกรายการแข่งขัน |  | 1d | 2021-10-01 08:00 A | 2021-10-01 17:00 A | 55 | 100% |  | 2021-10-01 08:00 | 2021-10-01 17:00 | 1d |  | Tae; Ice | 8h | 8h | 800 | 800 | 800 |
| 57 | 2.3.2.6 | หน้าพิมพ์ผลลัพธ์การแข่ง |  | 1d | 2021-10-04 08:00 A | 2021-10-04 17:00 A | 56 | 100% |  | 2021-10-04 08:00 | 2021-10-04 17:00 | 1d |  | Tae; Ice | 8h | 8h | 800 | 800 | 800 |
| 58 | 2.3.3 | **ผู้ดูแลระบบ** |  | 5.5d | 2021-10-05 08:00 A | 2021-10-12 12:00 A |  | 100% |  | 2021-10-05 08:00 | 2021-10-12 12:00 | 5.5d |  |  | 60h | 60h | 6,000 | 6,000 | 6,000 |
| 59 | 2.3.3.1 | หน้าเข้าสู่ระบบ |  | 0.5d | 2021-10-05 08:00 A | 2021-10-05 12:00 A | 57 | 100% |  | 2021-10-05 08:00 | 2021-10-05 12:00 | 0.5d |  | Tae; Ice | 4h | 4h | 400 | 400 | 400 |
| 60 | 2.3.3.2 | หน้าลงบอร์ดประกาศ |  | 1d | 2021-10-05 13:00 A | 2021-10-06 12:00 A | 59 | 100% |  | 2021-10-05 13:00 | 2021-10-06 12:00 | 1d |  | Tae; Ice | 8h | 8h | 800 | 800 | 800 |
| 61 | 2.3.3.3 | หน้าจัดการสมาชิก |  | 1d | 2021-10-06 13:00 A | 2021-10-07 12:00 A | 60 | 100% |  | 2021-10-06 13:00 | 2021-10-07 12:00 | 1d |  | Tae; Ice | 12h | 12h | 1,200 | 1,200 | 1,200 |
| 62 | 2.3.3.4 | หน้าจัดการเรื่องเงิน |  | 1d | 2021-10-07 13:00 A | 2021-10-08 12:00 A | 61 | 100% |  | 2021-10-07 13:00 | 2021-10-08 12:00 | 1d |  | Tae; Ice | 12h | 12h | 1,200 | 1,200 | 1,200 |
| 63 | 2.3.3.5 | หน้าสำรองข้อมูล |  | 2d | 2021-10-08 13:00 A | 2021-10-12 12:00 A | 62 | 100% |  | 2021-10-08 13:00 | 2021-10-12 12:00 | 2d |  | Tae; Ice | 24h | 24h | 2,400 | 2,400 | 2,400 |
| 64 | 2.4 | Finish Design Phase | milestone | 0d | 2021-10-15 12:00 A | 2021-10-15 12:00 A | 37 | 100% |  |  |  |  |  |  |  |  |  |  |  |
| 65 | 3 | **การนำมาใช้** |  | 94.12d | 2021-10-18 08:00 A | 2022-02-24 18:00 | 4 | 21% | 74.04d | 2021-10-18 08:00 | 2022-01-31 17:00 | 76d |  |  | 1042h | 194h | 105,000 | 132,200 | 19,400 |
| 66 | 3.1 | **ทำระบบล็อคอิน** |  | 2d | 2021-10-18 08:00 A | 2021-10-19 17:00 |  | 91% | 0.18d | 2021-10-18 08:00 | 2021-10-19 17:00 | 2d | 14d |  | 24h | 21h | 2,400 | 2,400 | 2,100 |
| 67 | 3.1.1 | **Frontend Dev** |  | 0.75d | 2021-10-18 08:00 A | 2021-10-18 15:00 |  | 67% | 0.25d | 2021-10-18 08:00 | 2021-10-18 15:00 | 0.75d | 15.25d |  | 8h | 5h | 800 | 800 | 500 |
| 68 | 3.1.1.1 | Login Form Component |  | 0.25d | 2021-10-18 08:00 A | 2021-10-18 10:00 A | 63 | 100% |  | 2021-10-18 08:00 | 2021-10-18 10:00 | 0.25d |  | Tae | 2h | 2h | 200 | 200 | 200 |
| 69 | 3.1.1.2 | Validate Login Form |  | 0.12d | 2021-10-18 10:00 A | 2021-10-18 11:00 A | 68 | 100% |  | 2021-10-18 10:00 | 2021-10-18 11:00 | 0.12d |  | Tae | 1h | 1h | 100 | 100 | 100 |
| 70 | 3.1.1.3 | Binding Api |  | 0.25d | 2021-10-18 11:00 | 2021-10-18 14:00 | 69 |  |  | 2021-10-18 11:00 | 2021-10-18 14:00 | 0.25d | 15.38d | Tae | 3h |  | 300 | 300 |  |
| 71 | 3.1.1.4 | Route Page |  | 0.12d | 2021-10-18 14:00 A | 2021-10-18 15:00 A | 70 | 100% |  | 2021-10-18 14:00 | 2021-10-18 15:00 | 0.12d |  | Tae | 2h | 2h | 200 | 200 | 200 |
| 72 | 3.1.2 | **Backend API** |  | 2d | 2021-10-18 08:00 A | 2021-10-19 17:00 A |  | 100% |  | 2021-10-18 08:00 | 2021-10-19 17:00 | 2d |  |  | 16h | 16h | 1,600 | 1,600 | 1,600 |
| 73 | 3.1.2.1 | Login & Authentication & Authorization |  | 2d | 2021-10-18 08:00 A | 2021-10-19 17:00 A | 63 | 100% |  | 2021-10-18 08:00 | 2021-10-19 17:00 | 2d |  | Mark | 16h | 16h | 1,600 | 1,600 | 1,600 |
| 74 | 3.2 | **ทำระบบสมัครสมาชิก** |  | 2d | 2021-10-20 08:00 A | 2021-10-21 17:00 A | 66 | 100% |  | 2021-10-20 08:00 | 2021-10-21 17:00 | 2d |  |  | 24h | 24h | 2,400 | 2,400 | 2,400 |
| 75 | 3.2.1 | **Frontend Dev** |  | 1d | 2021-10-20 08:00 A | 2021-10-20 17:00 A |  | 100% |  | 2021-10-20 08:00 | 2021-10-20 17:00 | 1d |  |  | 8h | 8h | 800 | 800 | 800 |
| 76 | 3.2.1.1 | Register Form Component |  | 0.25d | 2021-10-20 08:00 A | 2021-10-20 10:00 A | 71 | 100% |  | 2021-10-20 08:00 | 2021-10-20 10:00 | 0.25d |  | Ice | 2h | 2h | 200 | 200 | 200 |
| 77 | 3.2.1.2 | Validate Reigster Form |  | 0.25d | 2021-10-20 10:00 A | 2021-10-20 12:00 A | 76 | 100% |  | 2021-10-20 10:00 | 2021-10-20 12:00 | 0.25d |  | Ice | 2h | 2h | 200 | 200 | 200 |
| 78 | 3.2.1.3 | Binding Api |  | 0.38d | 2021-10-20 13:00 A | 2021-10-20 16:00 A | 77 | 100% |  | 2021-10-20 13:00 | 2021-10-20 16:00 | 0.38d |  | Ice | 3h | 3h | 300 | 300 | 300 |
| 79 | 3.2.1.4 | Route page |  | 0.12d | 2021-10-20 16:00 A | 2021-10-20 17:00 A | 78 | 100% |  | 2021-10-20 16:00 | 2021-10-20 17:00 | 0.12d |  | Ice | 1h | 1h | 100 | 100 | 100 |

| ID | WBS | Task | Type | Duration | Start | Finish | Predecessors | Complete | Remaining | Baseline start | Baseline finish | Baseline duration | Total slack | Free slack | Resources | Work | Actual work | Cost | Baseline cost | Actual cost |
| --- | --- | --- | --- | --- | --- | --- | --- | --- | --- | --- | --- | --- | --- | --- | --- | --- | --- | --- | --- | --- |
| 80 | 3.2.2 | **Backend API** |  | 2d | 2021-10-20 08:00 A | 2021-10-21 17:00 A |  | 100% |  | 2021-10-20 08:00 | 2021-10-21 17:00 | 2d |  |  |  | 16h | 16h | 1,600 | 1,600 | 1,600 |
| 81 | 3.2.2.1 | Register user |  | 1d | 2021-10-20 08:00 A | 2021-10-20 17:00 A | 73 | 100% |  | 2021-10-20 08:00 | 2021-10-20 17:00 | 1d |  |  | Mark | 8h | 8h | 800 | 800 | 800 |
| 82 | 3.2.2.2 | Update user |  | 1d | 2021-10-21 08:00 A | 2021-10-21 17:00 A | 81 | 100% |  | 2021-10-21 08:00 | 2021-10-21 17:00 | 1d |  |  | Mark | 8h | 8h | 800 | 800 | 800 |
| 83 | 3.3 | **ทำระบบของรูปแบบการแข่งขัน** |  | 13.5d | 2021-10-22 08:00 A | 2021-11-10 12:00 | 74 | 84% | 2.23d | 2021-10-22 08:00 | 2021-11-10 12:00 | 13.5d | 0d |  |  | 180h | 149h | 18,000 | 18,000 | 14,900 |
| 84 | 3.3.1 | **Frontend Dev** |  | 13.5d | 2021-10-22 08:00 A | 2021-11-10 12:00 |  | 75% | 3.38d | 2021-10-22 08:00 | 2021-11-10 12:00 | 13.5d | 0d |  |  | 108h | 81h | 10,800 | 10,800 | 8,100 |
| 85 | 3.3.1.1 | Create Add New Tournament Window |  | 0.25d | 2021-10-22 08:00 A | 2021-10-22 10:00 A | 79 | 100% |  | 2021-10-22 08:00 | 2021-10-22 10:00 | 0.25d |  |  | Ice | 2h | 2h | 200 | 200 | 200 |
| 86 | 3.3.1.2 | Validate Tournament Information Form |  | 0.25d | 2021-10-22 10:00 A | 2021-10-22 12:00 A | 85 | 100% |  | 2021-10-22 10:00 | 2021-10-22 12:00 | 0.25d |  |  | Ice | 2h | 2h | 200 | 200 | 200 |
| 87 | 3.3.1.3 | Player List Table Component |  | 1d | 2021-10-22 13:00 A | 2021-10-25 12:00 A | 86 | 100% |  | 2021-10-22 13:00 | 2021-10-25 12:00 | 1d |  |  | Tae | 8h | 8h | 800 | 800 | 800 |
| 88 | 3.3.1.4 | Route to Room Page |  | 0.25d | 2021-10-25 13:00 A | 2021-10-25 15:00 A | 87 | 100% |  | 2021-10-25 13:00 | 2021-10-25 15:00 | 0.25d |  |  | Ice | 2h | 2h | 200 | 200 | 200 |
| 89 | 3.3.1.5 | Currently Online Friends list component |  | 2d | 2021-10-25 15:00 A | 2021-10-27 15:00 A | 88 | 100% |  | 2021-10-25 15:00 | 2021-10-27 15:00 | 2d |  |  | Ice | 16h | 16h | 1,600 | 1,600 | 1,600 |
| 90 | 3.3.1.6 | Tournament's Chatbox |  | 3d | 2021-10-27 15:00 A | 2021-11-01 15:00 A | 89 | 100% |  | 2021-10-27 15:00 | 2021-11-01 15:00 | 3d |  |  | Tae | 24h | 24h | 2,400 | 2,400 | 2,400 |
| 91 | 3.3.1.7 | Ready Button and Ready Status for all player |  | 1d | 2021-11-01 15:00 A | 2021-11-02 15:00 | 90 | 50% | 0.5d | 2021-11-01 15:00 | 2021-11-02 15:00 | 1d | -67.24d | 0d | Tae | 8h | 4h | 800 | 800 | 400 |
| 92 | 3.3.1.8 | Room's menu to edit, delete |  | 1d | 2021-11-02 15:00 A | 2021-11-03 15:00 | 91 | 50% | 0.5d | 2021-11-02 15:00 | 2021-11-03 15:00 | 1d | -68.24d | 0d | Ice | 8h | 4h | 800 | 800 | 400 |
| 93 | 3.3.1.9 | Edit Tournament Information Form |  | 0.5d | 2021-11-03 15:00 A | 2021-11-04 10:00 | 92 | 50% | 0.25d | 2021-11-03 15:00 | 2021-11-04 10:00 | 0.5d | -68.74d | 0d | Tae | 4h | 2h | 400 | 400 | 200 |
| 94 | 3.3.1.10 | Validate Edit Tournament Information Form |  | 0.5d | 2021-11-04 10:00 A | 2021-11-04 15:00 | 93 | 50% | 0.25d | 2021-11-04 10:00 | 2021-11-04 15:00 | 0.5d | -69.24d | 0d | Tae | 4h | 2h | 400 | 400 | 200 |
| 95 | 3.3.1.11 | Confirm Delete Windows |  | 0.5d | 2021-11-04 15:00 A | 2021-11-05 10:00 | 94 | 50% | 0.25d | 2021-11-04 15:00 | 2021-11-05 10:00 | 0.5d | -69.74d | 0d | Ice | 4h | 2h | 400 | 400 | 200 |
| 96 | 3.3.1.12 | Binding Api |  | 3d | 2021-11-05 10:00 A | 2021-11-10 10:00 | 95 | 50% | 1.5d | 2021-11-05 10:00 | 2021-11-10 10:00 | 3d | -72.74d | 0d | Tae | 24h | 12h | 2,400 | 2,400 | 1,200 |
| 97 | 3.3.1.13 | Handle Warning message |  | 0.25d | 2021-11-10 10:00 A | 2021-11-10 12:00 | 96 | 50% | 0.12d | 2021-11-10 10:00 | 2021-11-10 12:00 | 0.25d | -72.99d | 0d | Tae | 2h | 1h | 200 | 200 | 100 |
| 98 | 3.3.2 | **Backend API** |  | 10d | 2021-10-22 08:00 A | 2021-11-04 17:00 |  | 95% | 0.5d | 2021-10-22 08:00 | 2021-11-04 17:00 | 10d | 0d |  |  | 72h | 68h | 7,200 | 7,200 | 6,800 |
| 99 | 3.3.2.1 | Create tournament |  | 1d | 2021-10-22 08:00 A | 2021-10-22 17:00 A | 82 | 100% |  | 2021-10-22 08:00 | 2021-10-22 17:00 | 1d |  |  | Mark | 8h | 8h | 800 | 800 | 800 |
| 100 | 3.3.2.2 | Update tournament |  | 2d | 2021-10-25 08:00 A | 2021-10-26 17:00 A | 99 | 100% |  | 2021-10-25 08:00 | 2021-10-26 17:00 | 2d |  |  | Mark | 16h | 16h | 1,600 | 1,600 | 1,600 |
| 101 | 3.3.2.3 | Delete tournament |  | 1d | 2021-10-27 08:00 A | 2021-10-27 17:00 A | 100 | 100% |  | 2021-10-27 08:00 | 2021-10-27 17:00 | 1d |  |  | Mark | 4h | 4h | 400 | 400 | 400 |
| 102 | 3.3.2.4 | Join tournament |  | 0.5d | 2021-10-28 08:00 A | 2021-10-28 12:00 A | 101 | 100% |  | 2021-10-28 08:00 | 2021-10-28 12:00 | 0.5d |  |  | Mark | 4h | 4h | 400 | 400 | 400 |
| 103 | 3.3.2.5 | Exit tournament |  | 1d | 2021-10-28 13:00 A | 2021-10-29 12:00 A | 102 | 100% |  | 2021-10-28 13:00 | 2021-10-29 12:00 | 1d |  |  | Mark | 4h | 4h | 400 | 400 | 400 |
| 104 | 3.3.2.6 | Create team |  | 1d | 2021-10-29 13:00 A | 2021-11-01 12:00 A | 103 | 100% |  | 2021-10-29 13:00 | 2021-11-01 12:00 | 1d |  |  | Mark | 8h | 8h | 800 | 800 | 800 |
| 105 | 3.3.2.7 | Join team |  | 1d | 2021-11-01 13:00 A | 2021-11-02 12:00 A | 104 | 100% |  | 2021-11-01 13:00 | 2021-11-02 12:00 | 1d |  |  | Mark | 8h | 8h | 800 | 800 | 800 |
| 106 | 3.3.2.8 | Exit team |  | 0.5d | 2021-11-02 13:00 A | 2021-11-02 17:00 A | 105 | 100% |  | 2021-11-02 13:00 | 2021-11-02 17:00 | 0.5d |  |  | Mark | 4h | 4h | 400 | 400 | 400 |
| 107 | 3.3.2.9 | Manage competitive |  | 2d | 2021-11-03 08:00 A | 2021-11-04 17:00 | 106 | 75% | 0.5d | 2021-11-03 08:00 | 2021-11-04 17:00 | 2d | -74d | 0d | Mark | 16h | 12h | 1,600 | 1,600 | 1,200 |
| 108 | 3.4 | Finish semester 1 | milestone | 0d | 2021-11-04 17:00 | 2021-11-04 17:00 | 107 |  |  | 2021-11-04 17:00 | 2021-11-04 17:00 | 0d | 2d |  |  |  |  |  |  |  |
| 109 | 3.5 | Prepare to presentation PROJECT1 | milestone, manual | 0d | 2021-12-01 09:00 | 2021-12-01 09:00 |  |  |  | 2021-12-01 09:00 | 2021-12-01 18:00 | 0d |  |  |  |  |  |  |  |  |

| ID | WBS | Task | Duration | Start | Finish | Predecessors | Baseline start | Baseline finish | Baseline duration | Total slack | Free slack | Resources | Work | Cost | Baseline cost |
| --- | --- | --- | --- | --- | --- | --- | --- | --- | --- | --- | --- | --- | --- | --- | --- |
| 110 | 3.6 | **ทำระบบการแข่งขัน** | 56d | 2021-11-10 13:00 | 2022-01-27 12:00 | 83 | 2021-11-10 13:00 | 2022-01-06 17:00 | 41.5d | -74d | 0d |  | 600h | 60,000 | 83,200 |
| 111 | 3.6.1 | **Frontend Dev** | 53d | 2021-11-10 13:00 | 2022-01-24 12:00 |  | 2021-11-10 13:00 | 2022-01-06 17:00 | 41.5d | -72.99d | 0d |  | 340h | 34,000 | 57,200 |
| 112 | 3.6.1.1 | Bidding Table | 2d | 2021-11-10 13:00 | 2021-11-12 12:00 | 97 | 2021-11-10 13:00 | 2021-11-12 12:00 | 2d | -72.99d | 0d | Ice | 16h | 1,600 | 1,600 |
| 113 | 3.6.1.2 | Card Selection Button | 0.25d | 2021-11-12 13:00 | 2021-11-12 15:00 | 112 | 2021-11-12 13:00 | 2021-11-12 15:00 | 0.25d | -72.99d | 0d | Ice | 2h | 200 | 200 |
| 114 | 3.6.1.3 | Bidding Level Button | 0.25d | 2021-11-12 15:00 | 2021-11-12 17:00 | 113 | 2021-11-12 15:00 | 2021-11-12 17:00 | 0.25d | -72.99d | 0d | Ice | 2h | 200 | 200 |
| 115 | 3.6.1.4 | Binding Api and Display Bidding In realtime | 2d | 2021-12-06 08:00 | 2021-12-07 17:00 | 114 | 2021-11-15 08:00 | 2021-11-16 17:00 | 2d | -72.99d | 0d | Ice | 16h | 1,600 | 1,600 |
| 116 | 3.6.1.5 | Create Room According to Bidding Information | 1d | 2021-12-08 08:00 | 2021-12-08 17:00 | 115 | 2021-11-17 08:00 | 2021-11-17 17:00 | 1d | -72.99d | 0d | Ice | 8h | 800 | 800 |
| 117 | 3.6.1.6 | Card list for each player | 1d | 2021-12-09 08:00 | 2021-12-09 17:00 | 116 | 2021-11-18 08:00 | 2021-11-18 17:00 | 1d | -72.99d | 0d | Tae | 8h | 800 | 800 |
| 118 | 3.6.1.7 | Direction Indicator | 0.12d | 2021-12-10 08:00 | 2021-12-10 09:00 | 117 | 2021-11-19 08:00 | 2021-11-19 09:00 | 0.12d | -72.99d | 0d | Tae | 1h | 100 | 100 |
| 119 | 3.6.1.8 | Score Board | 0.12d | 2021-12-10 09:00 | 2021-12-10 10:00 | 118 | 2021-11-19 09:00 | 2021-11-19 10:00 | 0.12d | -72.99d | 0d | Tae | 1h | 100 | 100 |
| 120 | 3.6.1.9 | Call Referee Button | 0.12d | 2021-12-10 10:00 | 2021-12-10 11:00 | 119 | 2021-11-19 10:00 | 2021-11-19 11:00 | 0.12d | -72.99d | 0d | Tae | 1h | 100 | 100 |
| 121 | 3.6.1.10 | Chatbox with Referee | 1d | 2021-12-10 11:00 | 2021-12-13 11:00 | 120 | 2021-11-19 11:00 | 2021-11-22 11:00 | 1d | -72.99d | 0d | Tae | 8h | 800 | 800 |
| 122 | 3.6.1.11 | Card Animation | 1.5d | 2021-12-13 11:00 | 2021-12-14 16:00 | 121 | 2021-11-22 11:00 | 2021-11-25 11:00 | 3d | -72.99d | 0d | Ice | 12h | 1,200 | 2,400 |
| 123 | 3.6.1.12 | Binding Api to display Card play in realtime for every session | 17.5d | 2021-12-14 16:00 | 2022-01-18 16:53 | 122 | 2021-11-25 11:00 | 2022-01-06 11:00 | 30d | -72.99d | 0d | Ice; Tae | 260h | 26,000 | 48,000 |
| 124 | 3.6.1.13 | Route to Score Page | 0.12d | 2022-01-19 08:00 | 2022-01-19 09:00 | 123 | 2022-01-06 11:00 | 2022-01-06 12:00 | 0.12d | -72.12d | 0d | Tae | 1h | 100 | 100 |
| 125 | 3.6.1.14 | Route to Another Board | 0.5d | 2022-01-24 08:00 | 2022-01-24 12:00 | 124 | 2022-01-06 13:00 | 2022-01-06 17:00 | 0.5d | -71d | 0d | Tae | 4h | 400 | 400 |
| 126 | 3.6.2 | **Backend API** | 38.5d | 2021-12-06 08:00 | 2022-01-27 12:00 |  | 2021-11-10 13:00 | 2021-12-28 12:00 | 34d | -79.12d | 0d |  | 260h | 26,000 | 26,000 |
| 127 | 3.6.2.1 | Bidding | 5d | 2021-12-06 08:00 | 2021-12-10 17:00 | 107 | 2021-11-10 13:00 | 2021-11-17 12:00 | 5d | -77d | 0d | Mark | 40h | 4,000 | 4,000 |
| 128 | 3.6.2.2 | Deal card | 5d | 2021-12-17 13:00 | 2021-12-24 12:00 | 127 | 2021-11-17 13:00 | 2021-11-24 12:00 | 5d | -79.12d | 0d | Mark | 40h | 4,000 | 4,000 |
| 129 | 3.6.2.3 | Play card | 10d | 2021-12-24 13:00 | 2022-01-07 12:00 | 128 | 2021-11-24 13:00 | 2021-12-08 12:00 | 10d | -79.12d | 0d | Mark | 80h | 8,000 | 8,000 |
| 130 | 3.6.2.4 | Calculate score | 5d | 2022-01-07 13:00 | 2022-01-14 12:00 | 129 | 2021-12-08 13:00 | 2021-12-15 12:00 | 5d | -79.12d | 0d | Mark | 40h | 4,000 | 4,000 |
| 131 | 3.6.2.5 | Ranking score | 3d | 2022-01-14 13:00 | 2022-01-19 12:00 | 130 | 2021-12-15 13:00 | 2021-12-20 12:00 | 3d | -79.12d | 0d | Mark | 20h | 2,000 | 2,000 |
| 132 | 3.6.2.6 | Swap table | 3d | 2022-01-19 13:00 | 2022-01-24 12:00 | 131 | 2021-12-20 13:00 | 2021-12-23 12:00 | 3d | -79.12d | 0d | Mark | 20h | 2,000 | 2,000 |
| 133 | 3.6.2.7 | Swap card | 3d | 2022-01-24 13:00 | 2022-01-27 12:00 | 132 | 2021-12-23 13:00 | 2021-12-28 12:00 | 3d | -79.12d | 0d | Mark | 20h | 2,000 | 2,000 |

| ID | WBS | Task | Duration | Start | Finish | Predecessors | Baseline start | Baseline finish | Baseline duration | Total slack | Free slack | Resources | Work | Cost | Baseline cost |
| --- | --- | --- | --- | --- | --- | --- | --- | --- | --- | --- | --- | --- | --- | --- | --- |
| 134 | 3.7 | **ทำระบบการบันทึกคะแนน** | 7d | 2022-01-24 13:00 | 2022-02-02 12:00 |  | 2021-12-28 13:00 | 2022-01-07 12:00 | 8d | -77.5d | 0d |  | 24h | 2,400 | 2,800 |
| 135 | 3.7.1 | **Frontend Dev** | 0.5d | 2022-01-24 13:00 | 2022-01-24 17:00 |  | 2022-01-07 08:00 | 2022-01-07 12:00 | 0.5d | -71d | 0d |  | 4h | 400 | 400 |
| 136 | 3.7.1.1 | Binding Api | 0.25d | 2022-01-24 13:00 | 2022-01-24 15:00 | 125 | 2022-01-07 08:00 | 2022-01-07 10:00 | 0.25d | -71d | 0d | Ice | 2h | 200 | 200 |
| 137 | 3.7.1.2 | Summary Table | 0.25d | 2022-01-24 15:00 | 2022-01-24 17:00 | 136 | 2022-01-07 10:00 | 2022-01-07 12:00 | 0.25d | -71d | 0d | Ice | 2h | 200 | 200 |
| 138 | 3.7.2 | **Backend API** | 3.75d | 2022-01-27 15:00 | 2022-02-02 12:00 |  | 2021-12-28 13:00 | 2021-12-31 12:00 | 3d | -79.25d | 0d |  | 20h | 2,000 | 2,400 |
| 139 | 3.7.2.1 | Save score of tournament | 0.5d | 2022-01-27 15:00 | 2022-01-28 10:00 | 133 | 2021-12-28 13:00 | 2021-12-29 12:00 | 1d | -79.25d | 0d | Mark | 8h | 800 | 800 |
| 140 | 3.7.2.2 | Save Ranking of tournament | 0.5d | 2022-02-01 13:00 | 2022-02-01 17:00 | 139 | 2021-12-29 13:00 | 2021-12-30 12:00 | 1d | -78d | 0d | Mark | 8h | 800 | 800 |
| 141 | 3.7.2.3 | Save card in tournament | 0.5d | 2022-02-02 08:00 | 2022-02-02 12:00 | 140 | 2021-12-30 13:00 | 2021-12-31 12:00 | 1d | -78d | 0d | Mark | 4h | 400 | 800 |
| 142 | 3.8 | **ทำระบบการค้นหาข้อมูลการแข่งขัน** | 8.5d | 2022-01-25 08:00 | 2022-02-04 12:00 |  | 2021-12-31 13:00 | 2022-01-10 12:00 | 6d | -78d | 0d |  | 22h | 2,200 | 2,200 |
| 143 | 3.8.1 | **Frontend Dev** | 1.5d | 2022-01-25 08:00 | 2022-01-26 12:00 |  | 2022-01-07 13:00 | 2022-01-10 12:00 | 1d | -71d | 0d |  | 8h | 800 | 800 |
| 144 | 3.8.1.1 | search bar component | 0.12d | 2022-01-25 08:00 | 2022-01-25 09:00 | 137 | 2022-01-07 13:00 | 2022-01-07 14:00 | 0.12d | -71d | 0d | Tae | 1h | 100 | 100 |
| 145 | 3.8.1.2 | List table view | 0.25d | 2022-01-25 09:00 | 2022-01-25 11:00 | 144 | 2022-01-07 14:00 | 2022-01-07 16:00 | 0.25d | -71d | 0d | Tae | 2h | 200 | 200 |
| 146 | 3.8.1.3 | Filter by category | 0.5d | 2022-01-25 11:00 | 2022-01-25 16:00 | 145 | 2022-01-07 16:00 | 2022-01-10 11:00 | 0.5d | -71d | 0d | Tae | 4h | 400 | 400 |
| 147 | 3.8.1.4 | Route to match information | 0.12d | 2022-01-26 11:00 | 2022-01-26 12:00 | 146 | 2022-01-10 11:00 | 2022-01-10 12:00 | 0.12d | -71d | 0d | Tae | 1h | 100 | 100 |
| 148 | 3.8.2 | **Backend API** | 2d | 2022-02-02 13:00 | 2022-02-04 12:00 |  | 2021-12-31 13:00 | 2022-01-04 12:00 | 2d | -78d | 0d |  | 14h | 1,400 | 1,400 |
| 149 | 3.8.2.1 | Get information | 1d | 2022-02-02 13:00 | 2022-02-03 12:00 | 141 | 2021-12-31 13:00 | 2022-01-03 12:00 | 1d | -78d | 0d | Mark | 8h | 800 | 800 |
| 150 | 3.8.2.2 | Get score | 1d | 2022-02-03 13:00 | 2022-02-04 12:00 | 149 | 2022-01-03 13:00 | 2022-01-04 12:00 | 1d | -78d | 0d | Mark | 6h | 600 | 600 |
| 151 | 3.9 | **ทำระบบการเล่นในชีวิตจริง** | 2d | 2022-02-04 13:00 | 2022-02-08 12:00 | 142 | 2022-01-10 13:00 | 2022-01-12 12:00 | 2d | -78d | 0d |  | 20h | 2,000 | 2,800 |
| 152 | 3.9.1 | **Frontend Dev** | 1.5d | 2022-02-04 13:00 | 2022-02-07 17:00 |  | 2022-01-10 13:00 | 2022-01-11 17:00 | 1.5d | -77.5d | 0d |  | 12h | 1,200 | 1,200 |
| 153 | 3.9.1.1 | Realplay page | 0.25d | 2022-02-04 13:00 | 2022-02-04 15:00 | 147 | 2022-01-10 13:00 | 2022-01-10 15:00 | 0.25d | -77.5d | 0d | Ice | 2h | 200 | 200 |
| 154 | 3.9.1.2 | Score Input page | 0.5d | 2022-02-04 15:00 | 2022-02-07 10:00 | 153 | 2022-01-10 15:00 | 2022-01-11 10:00 | 0.5d | -77.5d | 0d | Tae | 4h | 400 | 400 |
| 155 | 3.9.1.3 | Result Score page | 0.12d | 2022-02-07 10:00 | 2022-02-07 11:00 | 154 | 2022-01-11 10:00 | 2022-01-11 11:00 | 0.12d | -77.5d | 0d | Ice | 1h | 100 | 100 |
| 156 | 3.9.1.4 | Validate Real play page | 0.12d | 2022-02-07 11:00 | 2022-02-07 12:00 | 155 | 2022-01-11 11:00 | 2022-01-11 12:00 | 0.12d | -77.5d | 0d | Ice | 1h | 100 | 100 |
| 157 | 3.9.1.5 | Binding api | 0.5d | 2022-02-07 13:00 | 2022-02-07 17:00 | 156 | 2022-01-11 13:00 | 2022-01-11 17:00 | 0.5d | -77.5d | 0d | Ice | 4h | 400 | 400 |

| ID | WBS | Task | Duration | Start | Finish | Predecessors | Baseline start | Baseline finish | Baseline duration | Total slack | Free slack | Resources | Work | Cost | Baseline cost |
| --- | --- | --- | --- | --- | --- | --- | --- | --- | --- | --- | --- | --- | --- | --- | --- |
| 158 | 3.9.2 | **Backend API** | 2d | 2022-02-04 13:00 | 2022-02-08 12:00 |  | 2022-01-10 13:00 | 2022-01-12 12:00 | 2d | -78d | 0d |  | 8h | 800 | 1,600 |
| 159 | 3.9.2.1 | Send Score | 1d | 2022-02-04 13:00 | 2022-02-07 12:00 | 150 | 2022-01-10 13:00 | 2022-01-11 12:00 | 1d | -78d | 0d | Mark | 4h | 400 | 800 |
| 160 | 3.9.2.2 | Get score | 1d | 2022-02-07 13:00 | 2022-02-08 12:00 | 159 | 2022-01-11 13:00 | 2022-01-12 12:00 | 1d | -78d | 0d | Mark | 4h | 400 | 800 |
| 161 | 3.10 | **ทำระบบการสำรองข้อมูล** | 2d | 2022-02-08 13:00 | 2022-02-10 12:00 | 151 | 2022-01-12 13:00 | 2022-01-14 12:00 | 2d | -78d | 0d |  | 16h | 1,600 | 1,600 |
| 162 | 3.10.1 | **Backend API** | 2d | 2022-02-08 13:00 | 2022-02-10 12:00 |  | 2022-01-12 13:00 | 2022-01-14 12:00 | 2d | -78d | 0d |  | 16h | 1,600 | 1,600 |
| 163 | 3.10.1.1 | Save data | 1d | 2022-02-08 13:00 | 2022-02-09 12:00 | 160 | 2022-01-12 13:00 | 2022-01-13 12:00 | 1d | -78d | 0d | Mark | 8h | 800 | 800 |
| 164 | 3.10.1.2 | Get data | 1d | 2022-02-09 13:00 | 2022-02-10 12:00 | 163 | 2022-01-13 13:00 | 2022-01-14 12:00 | 1d | -78d | 0d | Mark | 8h | 800 | 800 |
| 165 | 3.11 | **ระบบโปรไฟล์ผู้ใช้** | 6.25d | 2022-02-10 13:00 | 2022-02-18 15:00 | 161 | 2022-01-12 08:00 | 2022-01-25 10:00 | 9.25d | -78d | 0d |  | 74h | 8,200 | 9,800 |
| 166 | 3.11.1 | **Frontend Dev** | 6.25d | 2022-02-10 13:00 | 2022-02-18 15:00 |  | 2022-01-12 08:00 | 2022-01-25 10:00 | 9.25d | -78d | 0d |  | 50h | 5,800 | 7,400 |
| 167 | 3.11.1.1 | User Profile Information Page | 0.5d | 2022-02-10 13:00 | 2022-02-10 17:00 | 157 | 2022-01-12 08:00 | 2022-01-12 12:00 | 0.5d | -78d | 0d | Ice | 4h | 400 | 400 |
| 168 | 3.11.1.2 | User Information Editor Page | 0.5d | 2022-02-11 08:00 | 2022-02-11 12:00 | 167 | 2022-01-12 13:00 | 2022-01-12 17:00 | 0.5d | -78d | 0d | Ice | 4h | 400 | 400 |
| 169 | 3.11.1.3 | Validate Edit User Profile Form | 0.25d | 2022-02-11 13:00 | 2022-02-11 15:00 | 168 | 2022-01-13 08:00 | 2022-01-13 10:00 | 0.25d | -78d | 0d | Ice | 2h | 200 | 200 |
| 170 | 3.11.1.4 | Edit Display Component Menu | 0.5d | 2022-02-11 15:00 | 2022-02-14 10:00 | 169 | 2022-01-13 10:00 | 2022-01-14 10:00 | 1d | -78d | 0d | Tae | 4h | 400 | 800 |
| 171 | 3.11.1.5 | Update Display Component According to HUD menu settings | 2d | 2022-02-14 10:00 | 2022-02-16 10:00 | 170 | 2022-01-14 10:00 | 2022-01-19 10:00 | 3d | -78d | 0d | Tae | 16h | 1,600 | 2,400 |
| 172 | 3.11.1.6 | Recent match History table | 0.5d | 2022-02-16 10:00 | 2022-02-16 15:00 | 171 | 2022-01-19 10:00 | 2022-01-20 10:00 | 1d | -78d | 0d | Ice | 4h | 400 | 800 |
| 173 | 3.11.1.7 | Binding Api | 2d | 2022-02-16 15:00 | 2022-02-18 15:00 | 172 | 2022-01-20 10:00 | 2022-01-25 10:00 | 3d | -78d | 0d | Tae | 16h | 2,400 | 2,400 |
| 174 | 3.11.2 | **Backend API** | 3d | 2022-02-10 13:00 | 2022-02-15 12:00 |  | 2022-01-14 13:00 | 2022-01-19 12:00 | 3d | -74.75d | 0d |  | 24h | 2,400 | 2,400 |
| 175 | 3.11.2.1 | Get Profile Information | 0.5d | 2022-02-10 13:00 | 2022-02-10 17:00 | 164 | 2022-01-14 13:00 | 2022-01-14 17:00 | 0.5d | -74.75d | 0d | Mark | 4h | 400 | 400 |
| 176 | 3.11.2.2 | Change Profile Information | 1d | 2022-02-11 08:00 | 2022-02-11 17:00 | 175 | 2022-01-17 08:00 | 2022-01-17 17:00 | 1d | -74.75d | 0d | Mark | 8h | 800 | 800 |
| 177 | 3.11.2.3 | Change Profile Setting | 1d | 2022-02-14 08:00 | 2022-02-14 17:00 | 176 | 2022-01-18 08:00 | 2022-01-18 17:00 | 1d | -74.75d | 0d | Mark | 8h | 800 | 800 |
| 178 | 3.11.2.4 | Get User Data | 0.5d | 2022-02-15 08:00 | 2022-02-15 12:00 | 177 | 2022-01-19 08:00 | 2022-01-19 12:00 | 0.5d | -74.75d | 0d | Mark | 4h | 400 | 400 |
| 179 | 3.12 | **ทำระบบบอร์ด** | 4.25d | 2022-02-18 15:00 | 2022-02-24 17:00 | 165 | 2022-01-19 13:00 | 2022-01-31 12:00 | 8d | -78d | 0d |  | 58h | 5,800 | 7,000 |
| 180 | 3.12.1 | **Frontend Dev** | 4.25d | 2022-02-18 15:00 | 2022-02-24 17:00 |  | 2022-01-25 10:00 | 2022-01-31 12:00 | 4.25d | -78d | 0d |  | 34h | 3,400 | 3,400 |
| 181 | 3.12.1.1 | Board list page | 0.25d | 2022-02-18 15:00 | 2022-02-18 17:00 | 173 | 2022-01-25 10:00 | 2022-01-25 12:00 | 0.25d | -78d | 0d | Tae | 2h | 200 | 200 |
| 182 | 3.12.1.2 | filter board by date or name | 0.25d | 2022-02-21 08:00 | 2022-02-21 10:00 | 181 | 2022-01-25 13:00 | 2022-01-25 15:00 | 0.25d | -78d | 0d | Tae | 2h | 200 | 200 |
| 183 | 3.12.1.3 | Board Create Form | 0.25d | 2022-02-21 10:00 | 2022-02-21 12:00 | 182 | 2022-01-25 15:00 | 2022-01-25 17:00 | 0.25d | -78d | 0d | Ice | 2h | 200 | 200 |
| 184 | 3.12.1.4 | validate board post form | 0.25d | 2022-02-21 13:00 | 2022-02-21 15:00 | 183 | 2022-01-26 08:00 | 2022-01-26 10:00 | 0.25d | -78d | 0d | Ice | 2h | 200 | 200 |
| 185 | 3.12.1.5 | Board Edit Form | 0.25d | 2022-02-21 15:00 | 2022-02-21 17:00 | 184 | 2022-01-26 10:00 | 2022-01-26 12:00 | 0.25d | -78d | 0d | Ice | 2h | 200 | 200 |
| 186 | 3.12.1.6 | validate edit board form | 0.25d | 2022-02-22 08:00 | 2022-02-22 10:00 | 185 | 2022-01-26 13:00 | 2022-01-26 15:00 | 0.25d | -78d | 0d | Ice | 2h | 200 | 200 |
| 187 | 3.12.1.7 | Delete board confirmation form | 0.25d | 2022-02-22 10:00 | 2022-02-22 12:00 | 186 | 2022-01-26 15:00 | 2022-01-26 17:00 | 0.25d | -78d | 0d | Ice | 2h | 200 | 200 |
| 188 | 3.12.1.8 | validate delete board form | 0.25d | 2022-02-22 13:00 | 2022-02-22 15:00 | 187 | 2022-01-27 08:00 | 2022-01-27 10:00 | 0.25d | -78d | 0d | Ice | 2h | 200 | 200 |
| 189 | 3.12.1.9 | Board Page | 0.25d | 2022-02-22 15:00 | 2022-02-22 17:00 | 188 | 2022-01-27 10:00 | 2022-01-27 12:00 | 0.25d | -78d | 0d | Ice | 2h | 200 | 200 |
| 190 | 3.12.1.10 | Binding Api | 2d | 2022-02-23 08:00 | 2022-02-24 17:00 | 189 | 2022-01-27 13:00 | 2022-01-31 12:00 | 2d | -78d | 0d | Ice | 16h | 1,600 | 1,600 |

| ID | WBS | Task | Type | Duration | Start | Finish | Predecessors | Complete | Remaining | Actual start | Baseline start | Baseline finish | Baseline duration | Total slack | Free slack | Constraint | Resources | Work | Actual work | Cost | Baseline cost | Actual cost |
| --- | --- | --- | --- | --- | --- | --- | --- | --- | --- | --- | --- | --- | --- | --- | --- | --- | --- | --- | --- | --- | --- | --- |
| 191 | 3.12.2 | **Backend API** |  | 3d | 2022-02-18 15:00 | 2022-02-23 15:00 |  |  |  |  | 2022-01-19 13:00 | 2022-01-25 17:00 | 4.5d | -76.75d | 0d |  |  | 24h |  | 2,400 | 3,600 |  |
| 192 | 3.12.2.1 | Get information board |  | 0.5d | 2022-02-18 15:00 | 2022-02-21 10:00 | 178 |  |  |  | 2022-01-19 13:00 | 2022-01-19 17:00 | 0.5d | -76.75d | 0d |  | Mark | 4h |  | 400 | 400 |  |
| 193 | 3.12.2.2 | Create information board |  | 1d | 2022-02-21 10:00 | 2022-02-22 10:00 | 192 |  |  |  | 2022-01-20 08:00 | 2022-01-21 17:00 | 2d | -76.75d | 0d |  | Mark | 8h |  | 800 | 1,600 |  |
| 194 | 3.12.2.3 | Edit information board |  | 0.5d | 2022-02-22 10:00 | 2022-02-22 15:00 | 193 |  |  |  | 2022-01-24 08:00 | 2022-01-24 17:00 | 1d | -76.75d | 0d |  | Mark | 4h |  | 400 | 800 |  |
| 195 | 3.12.2.4 | Delete information board |  | 1d | 2022-02-22 15:00 | 2022-02-23 15:00 | 194 |  |  |  | 2022-01-25 08:00 | 2022-01-25 17:00 | 1d | -76.75d | 0d |  | Mark | 8h |  | 800 | 800 |  |
| 196 | 3.13 | Finish Implement Phase | milestone | 0d | 2022-02-23 15:00 | 2022-02-23 15:00 | 195 |  |  |  |  |  |  | -76.75d | 0d |  |  |  |  |  |  |  |
| 197 | 4 | **การ Deploy** |  | 14d | 2022-02-01 09:00 | 2022-02-18 18:00 | 65 |  |  |  | 2022-02-01 09:00 | 2022-02-09 18:00 | 7d |  |  |  |  | 32h |  | 3,200 | 3,200 |  |
| 198 | 4.1 | Deploy หน้าเว็บ |  | 4d | 2022-02-02 08:00 | 2022-02-07 17:00 |  |  |  |  | 2022-02-01 09:00 | 2022-02-07 09:00 | 4d | -61d | 0d |  | Tae | 16h |  | 1,600 | 1,600 |  |
| 199 | 4.2 | Deploy API |  | 4d | 2022-02-15 08:00 | 2022-02-18 17:00 |  |  |  |  | 2022-02-01 09:00 | 2022-02-07 09:00 | 4d | -70d | 0d |  | Mark | 16h |  | 1,600 | 1,600 |  |
| 200 | 4.3 | Finish Deploy Phase | milestone | 0d | 2022-02-18 17:00 | 2022-02-18 17:00 | 198, 199 |  |  |  |  |  |  | -70d | 0d |  |  |  |  |  |  |  |
| 201 | 5 | **การทดสอบ** |  | 91d | 2021-11-15 09:00 | 2022-03-21 18:00 | 197 | 2% | 89.08d | 2021-11-15 08:00 | 2022-02-10 09:00 | 2022-03-21 18:00 | 28d |  |  |  |  | 100h | 3h | 7,500 | 7,500 | 225 |
| 202 | 5.1 | Unit test |  | 15d | 2021-11-15 08:00 A | 2021-12-03 17:00 |  | 5% | 14.25d |  | 2022-02-14 09:00 | 2022-03-07 09:00 | 15d | 35.5d | 0d | start no earlier than 2021-11-14 09:00 | Advisor; Ice; Mark; Tae | 60h | 3h | 4,500 | 4,500 | 225 |
| 203 | 5.2 | Integration test |  | 6.62d | 2021-12-06 08:00 | 2022-01-10 17:00 | 202 |  |  |  | 2022-02-10 09:00 | 2022-02-14 09:00 | 2d | 35.5d | 0d |  | Advisor; Ice; Mark; Tae | 8h |  | 600 | 600 |  |
| 204 | 5.3 | Performance testing |  | 10d | 2022-01-11 08:00 | 2022-01-24 17:00 | 203 |  |  |  | 2022-03-10 09:00 | 2022-03-21 09:00 | 7d | 35.5d | 0d |  | Advisor; Ice; Mark; Tae | 20h |  | 1,500 | 1,500 |  |
| 205 | 5.4 | User Acceptance Test |  | 4d | 2022-01-25 08:00 | 2022-01-31 14:00 | 204 |  |  |  | 2022-03-07 09:00 | 2022-03-10 09:00 | 3d | 35.5d | 0d |  | Advisor; Ice; Mark; Tae | 12h |  | 900 | 900 |  |
| 206 | 5.5 | Finish Test Phase | milestone | 0d | 2022-01-31 14:00 | 2022-01-31 14:00 | 205 |  |  |  |  |  |  | 35.5d |  |  |  |  |  |  |  |  |
| 207 | 6 | **การประเมินผล** |  | 7d | 2022-03-22 09:00 | 2022-03-31 09:00 | 201 |  |  |  | 2022-03-22 09:00 | 2022-03-31 09:00 | 7d |  |  |  |  | 60h |  | 4,500 | 4,500 |  |
| 208 | 6.1 | การดูผลตอบรับจากผู้ใช้งานจริง |  | 7d | 2022-03-22 09:00 | 2022-03-31 09:00 | 204 |  |  |  | 2022-03-22 09:00 | 2022-03-31 09:00 | 7d | 0d |  |  | Advisor; Ice; Mark; Tae | 60h |  | 4,500 | 4,500 |  |
| 209 | 6.2 | Finish Project | milestone | 0d | 2022-03-31 09:00 | 2022-03-31 09:00 | 208 |  |  |  | 2022-03-31 09:00 | 2022-03-31 09:00 | 0d | 0d |  |  |  |  |  |  |  |  |
